# Barber 920 - Continuidad de Fase 2 (O a W)

How a schedule from MS Project XML changed from version to version. A marks actual dates.

## Version 1 (data date 2026-10-04, saved 2026-10-05)

Note of the change: docs: separar el plan de la Fase 2 (A–N) del plan de continuidad (O–W)

| ID | Task | Duration | Start | Finish | Predecessors |
| --- | --- | --- | --- | --- | --- |
| 1 | O Completar acuerdos y datos | 1d | 2026-10-05 | 2026-10-05 |  |
| 2 | P Completar catálogo y sucursales | 2d | 2026-10-06 | 2026-10-07 | 1 |
| 3 | Q Definir personal y reglas | 3d | 2026-10-06 | 2026-10-08 | 1 |
| 4 | R Ajustar interfaz con datos confirmados | 2d | 2026-10-08 | 2026-10-09 | 2 |
| 5 | S Adaptar API y disponibilidad | 4d | 2026-10-09 | 2026-10-14 | 3 |
| 6 | T Ejecutar pruebas integrales | 2d | 2026-10-15 | 2026-10-16 | 4, 5 |
| 7 | U Revisar versión con cliente y equipo | 1d | 2026-10-19 | 2026-10-19 | 6 |
| 8 | V Corregir observaciones | 2d | 2026-10-20 | 2026-10-21 | 7 |
| 9 | W Preparar evidencia de la iteración | 2d | 2026-10-19 | 2026-10-20 | 6 |

## Version 2 (data date 2026-11-13, saved 2026-11-14)

Note of the change: docs: marcar como terminadas las actividades O a W de la Fase 3 (#18)

Last finish 2026-10-21 → 2026-11-12 (+22d). Complete tasks 0 → 9.

Changed:

| ID | Task | Start | Finish | Duration | Complete | Other |
| --- | --- | --- | --- | --- | --- | --- |
| 1 | O Completar acuerdos y datos | 2026-10-05 → 2026-11-12 A (+38d) | 2026-10-05 → 2026-11-12 A (+38d) |  | 0% → 100% | baseline start none → 2026-10-05; baseline finish none → 2026-10-05 |
| 2 | P Completar catálogo y sucursales | 2026-10-06 → 2026-11-08 A (+33d) | 2026-10-07 → 2026-11-09 A (+33d) |  | 0% → 100% | baseline start none → 2026-10-06; baseline finish none → 2026-10-07 |
| 3 | Q Definir personal y reglas | 2026-10-06 → 2026-11-08 A (+33d) | 2026-10-08 → 2026-11-09 A (+32d) | 3d → 2d | 0% → 100% | resources Dante Uriel Ramírez Márquez → Dante Uriel Ramírez Márquez [150%]; baseline start none → 2026-10-06; baseline finish none → 2026-10-08 |
| 4 | R Ajustar interfaz con datos confirmados | 2026-10-08 → 2026-11-08 A (+31d) | 2026-10-09 → 2026-11-08 A (+30d) | 2d → 1d | 0% → 100% | resources Carlos Guerrero Morales → Carlos Guerrero Morales [200%]; baseline start none → 2026-10-08; baseline finish none → 2026-10-09 |
| 5 | S Adaptar API y disponibilidad | 2026-10-09 → 2026-11-08 A (+30d) | 2026-10-14 → 2026-11-08 A (+25d) | 4d → 1d | 0% → 100% | resources Jesús Alberto González Martínez → Jesús Alberto González Martínez [400%]; baseline start none → 2026-10-09; baseline finish none → 2026-10-14 |
| 6 | T Ejecutar pruebas integrales | 2026-10-15 → 2026-11-08 A (+24d) | 2026-10-16 → 2026-11-08 A (+23d) | 2d → 1d | 0% → 100% | resources Jesús Alberto González Martínez → Jesús Alberto González Martínez [200%]; baseline start none → 2026-10-15; baseline finish none → 2026-10-16 |
| 7 | U Revisar versión con cliente y equipo | 2026-10-19 → 2026-11-12 A (+24d) | 2026-10-19 → 2026-11-12 A (+24d) |  | 0% → 100% | baseline start none → 2026-10-19; baseline finish none → 2026-10-19 |
| 8 | V Corregir observaciones | 2026-10-20 → 2026-11-12 A (+23d) | 2026-10-21 → 2026-11-12 A (+22d) | 2d → 1d | 0% → 100% | resources Carlos Guerrero Morales → Carlos Guerrero Morales [200%]; baseline start none → 2026-10-20; baseline finish none → 2026-10-21 |
| 9 | W Preparar evidencia de la iteración | 2026-10-19 → 2026-11-08 A (+20d) | 2026-10-20 → 2026-11-08 A (+19d) | 2d → 1d | 0% → 100% | resources Luis Uziel Cruz Martínez → Luis Uziel Cruz Martínez [200%]; baseline start none → 2026-10-19; baseline finish none → 2026-10-20 |

## Version 3 (data date 2026-11-13, saved 2026-11-14)

Note of the change: Merge PR #21: plan de desarrollo para Project, video y fecha de la firma

Last finish 2026-11-12 → 2026-11-11 (-1d).

Changed:

| ID | Task | Start | Finish |
| --- | --- | --- | --- |
| 1 | O Completar acuerdos y datos | 2026-11-12 A → 2026-11-11 A (-1d) | 2026-11-12 A → 2026-11-11 A (-1d) |
| 7 | U Revisar versión con cliente y equipo | 2026-11-12 A → 2026-11-11 A (-1d) | 2026-11-12 A → 2026-11-11 A (-1d) |
| 8 | V Corregir observaciones | 2026-11-12 A → 2026-11-11 A (-1d) | 2026-11-12 A → 2026-11-11 A (-1d) |
